# MealMate alfa

Schedule from MS Project, 2022-12-22 to 2023-05-25, costs in €.

## Calendars

- Standard: Mon-Fri 09:00-13:00, 14:00-18:00; Sat-Sun off.

## Resources

| Resource | Group | Rate |
| --- | --- | --- |
| D'Ambrosi Daniele | back-end | 25 |
| Concil Tania | front-end | 23 |
| Bianchi Matteo | front-end | 20 |
| Guerra Andrea | back-end | 20 |

## Schedule

| ID | WBS | Task | Duration | Start | Finish | Predecessors | Total slack | Free slack | Resources | Work | Cost |
| --- | --- | --- | --- | --- | --- | --- | --- | --- | --- | --- | --- |
| 1 | 1 | **Project management** | 23d | 2022-12-22 | 2023-01-23 |  |  |  | Concil Tania; D'Ambrosi Daniele | 368h | 8,832 |
| 2 | 1.1 | Project scope statement | 1d? | 2022-12-22 | 2022-12-22 |  | 77d | 0d |  |  |  |
| 3 | 1.2 | WBS | 1d? | 2022-12-22 | 2022-12-22 |  | 77d | 0d |  |  |  |
| 4 | 1.3 | Approved project management plan | 1d? | 2022-12-23 | 2022-12-23 | 2, 3 | 77d |  |  |  |  |
| 5 | 2 | **Requirements** | 3d? | 2023-01-24 | 2023-01-26 | 1 | 56d |  | Concil Tania; D'Ambrosi Daniele | 64h | 1,520 |
| 6 | 2.1 | Software architecture document | 1d? | 2023-01-24 | 2023-01-24 | 1 | 56d | 0d |  |  |  |
| 7 | 2.2 | **UI Design** | 2d? | 2023-01-25 | 2023-01-26 |  | 85d |  | Concil Tania | 16h | 368 |
| 8 | 2.2.1 | Style definition | 1d? | 2023-01-25 | 2023-01-25 | 6 | 85d | 0d |  |  |  |
| 9 | 2.2.2 | Mobile app design | 1d? | 2023-01-26 | 2023-01-26 | 8 | 85d |  |  |  |  |
| 10 | 3 | **Infrastructure** | 12d | 2023-02-08 | 2023-02-23 |  |  |  | Guerra Andrea | 96h | 1,920 |
| 11 | 3.1 | Infrastructure specification | 1d? | 2023-02-08 | 2023-02-08 | 6 | 46d | 0d |  |  |  |
| 12 | 3.2 | Infrastructure cost prediction | 1d? | 2023-02-09 | 2023-02-09 | 11 | 46d |  |  |  |  |
| 13 | 4 | **Back-end** | 21d | 2023-02-23 | 2023-03-23 |  |  |  | D'Ambrosi Daniele; Guerra Andrea | 336h | 7,560 |
| 14 | 4.1 | Media database | 1d? | 2023-02-24 | 2023-02-24 | 10 | 36d | 0d |  |  |  |
| 15 | 4.2 | Client-management system | 1d? | 2023-02-24 | 2023-02-24 | 10 | 36d | 0d |  |  |  |
| 16 | 4.3 | Authentication provider | 1d? | 2023-02-24 | 2023-02-24 | 10 | 36d | 0d |  |  |  |
| 17 | 4.4 | Application logic implementation | 1d? | 2023-02-27 | 2023-02-27 | 14, 15, 16 | 36d |  |  |  |  |
| 18 | 5 | **Front-end** | 21d | 2023-02-23 | 2023-03-23 |  |  |  | Bianchi Matteo; Concil Tania | 336h | 7,224 |
| 19 | 5.1 | Home page | 1d? | 2023-02-24 | 2023-02-24 | 10 | 37d |  |  |  |  |
| 20 | 5.2 | Login page | 1d? | 2023-02-24 | 2023-02-24 | 10 | 37d |  |  |  |  |
| 21 | 5.3 | Main page | 1d? | 2023-02-24 | 2023-02-24 | 10 | 37d |  |  |  |  |
| 22 | 6 | **Test** | 21d | 2023-03-23 | 2023-04-20 |  |  |  | D'Ambrosi Daniele | 168h | 4,200 |
| 23 | 6.1 | Test GUI | 1d? | 2023-03-24 | 2023-03-24 | 18 | 18d |  |  |  |  |
| 24 | 6.2 | Test App | 1d? | 2023-03-24 | 2023-03-24 | 13, 18 | 18d |  |  |  |  |

| ID | WBS | Task | Type | Duration | Start | Finish | Predecessors | Resources | Work | Cost |
| --- | --- | --- | --- | --- | --- | --- | --- | --- | --- | --- |
| 25 | 7 | **Deployment** |  | 26d | 2023-04-20 | 2023-05-25 | 22 | D'Ambrosi Daniele | 208h | 5,200 |
| 26 | 7.1 | Consegna ai prof. | manual | 1d? | 2023-04-20 | 2023-04-20 |  |  |  |  |
| 27 | 7.2 | Pubblicazione su Appstore | manual | 1d? | 2023-04-20 | 2023-04-20 |  |  |  |  |
